# lab1.1

How a schedule from MS Project changed from version to version. A marks actual dates.

## Version 1 (data date 2024-09-27, saved 2024-10-25, file факт.mpp)

Note of the change: стрвп 3 нужно редачить

| ID | WBS | Task | Duration | Start | Finish | Predecessors | Complete | Total float |
| --- | --- | --- | --- | --- | --- | --- | --- | --- |
| 1 |  | Начало проекта | 0d | 2024-09-24 A | 2024-09-24 |  | 99% | 3d |
| 2 | 2 | **Выравнивание стен** | 15d | 2024-09-24 A | 2024-11-04 |  | 20% | 0d |
| 3 |  | Стены в спальне | 4d | 2024-09-24 A | 2024-10-03 | 1 | 75% | 0d |
| 4 |  | Стены в гостиной | 4d | 2024-10-04 | 2024-10-15 | 3 |  | 0d |
| 5 |  | Стены в кухне | 3d | 2024-10-16 | 2024-10-23 | 4 |  | 0d |
| 6 |  | Стены в прихожей | 4d | 2024-10-24 | 2024-11-04 | 5 |  | 0d |
| 7 |  | Выравнивание стен завершено | 0d | 2024-11-04 | 2024-11-04 | 6 |  | 0d |
| 8 | 3 | **Санузел** | 18.5d | 2024-09-24 A | 2024-11-13 |  | 33% | 32.5d |
| 9 |  | Снятие штукатурки в санузле | 3d | 2024-09-24 A | 2024-10-01 A | 1 | 100% |  |
| 10 |  | Отделка стен санузла | 4d | 2024-10-23 | 2024-11-01 | 9 |  | 32.5d |
| 11 |  | Отделка потолка санузла | 2d | 2024-11-04 | 2024-11-07 | 10 |  | 32.5d |
| 12 |  | Отделка пола санузла | 2d | 2024-11-08 | 2024-11-13 | 11 |  | 32.5d |
| 13 |  | Установка сантехнического оборудования | 1d | 2024-09-24 A | 2024-09-25 |  | 99% | 50d |
| 14 |  | Ремонт санузла завершен | 0d | 2024-09-24 A | 2024-09-24 A | 13 | 100% |  |
| 15 | 4 | **Ванная** | 11.5d | 2024-09-24 A | 2024-10-24 |  | 23% | 3.5d |
| 16 |  | Снятие штукатурки в ванной | 3d | 2024-09-24 A | 2024-09-26 A | 1 | 100% |  |
| 17 |  | Отделка стен ванной | 5d | 2024-09-27 | 2024-10-10 | 16 |  | 3.5d |
| 18 |  | Отделка потолка ванной | 2d | 2024-10-11 | 2024-10-16 | 17 |  | 3.5d |
| 19 |  | Отделка пола ванной | 2d | 2024-10-17 | 2024-10-22 | 18 |  | 3.5d |
| 20 |  | Установка сантехники | 1d | 2024-10-23 | 2024-10-24 | 19 |  | 3.5d |
| 21 |  | Ремонт ванной завершен | 0d | 2024-10-24 | 2024-10-24 | 20 |  | 3.5d |
| 22 | 5 | **Отделка стен** | 18d | 2024-11-05 | 2024-12-24 |  |  | 0d |
| 23 |  | Отделка стен в спальне | 5d | 2024-11-05 | 2024-11-18 | 7, 14, 21 |  | 0d |
| 24 |  | Отделка стен в гостиной | 7d | 2024-11-19 | 2024-12-06 | 23 |  | 0d |
| 25 |  | Отделка стен в кухне | 5d | 2024-12-09 | 2024-12-20 | 24 |  | 0d |
| 26 |  | Отделка стен в прихожей | 1d | 2024-12-23 | 2024-12-24 | 25 |  | 0d |
| 27 |  | Отделка стен завершена | 0d | 2024-12-24 | 2024-12-24 | 26 |  | 18d |
| 28 | 6 | **Потолки** | 20d | 2024-11-05 | 2024-12-30 |  |  | 4d |
| 29 |  | Замер | 2d | 2024-11-05 | 2024-11-08 | 7 |  | 4d |
| 30 |  | Заказ и оплата потолков | 2d | 2024-11-11 | 2024-11-14 | 29 |  | 4d |
| 31 |  | Навесной потолок в спальне | 2d | 2024-12-13 | 2024-12-18 | 23, 30FS+10d |  | 14d |
| 32 |  | Навесной потолок в гостиной | 2d | 2024-12-19 | 2024-12-24 | 24, 30FS+10d |  | 8d |
| 33 |  | Панельный потолок в кухне | 2d | 2024-12-25 | 2024-12-30 | 25, 30 |  | 5d |
| 34 |  | Навесной потолок в прихожей | 2d | 2024-12-25 | 2024-12-30 | 26, 30FS+10d |  | 0d |
| 35 |  | Монтаж потолков завершен | 0d | 2024-12-30 | 2024-12-30 | 31, 32, 33, 34 |  | 16d |
| 36 | 7 | **Полы** | 20d | 2024-12-19 | 2025-02-12 |  |  | 0d |
| 37 |  | Отделка полов в спальне | 6d | 2024-12-19 | 2025-01-03 | 31 |  | 14d |
| 38 |  | Отделка полов в гостиной | 6d | 2025-01-06 | 2025-01-21 | 32 |  | 8d |
| 39 |  | Отделка полов в кухне | 3d | 2025-01-22 | 2025-01-29 | 33 |  | 5d |
| 40 |  | Отделка полов в прихожей | 5d | 2025-01-30 | 2025-02-12 | 34 |  | 0d |
| 41 |  | Отделка полов завершена | 0d | 2025-02-12 | 2025-02-12 | 37, 38, 39, 40 |  | 0d |
| 42 |  | Конец проекта | 0d | 2025-02-12 | 2025-02-12 | 41 |  | 0d |

## Version 2 (data date 2024-09-27, saved 2024-10-25, file процент.mpp)

Note of the change: стрвп 3 нужно редачить

Last finish stays 2025-02-12. Complete tasks 3 → 6.

Changed:

| ID | Task | Start | Finish | Complete | Total float |
| --- | --- | --- | --- | --- | --- |
| 28 | **Потолки** | 2024-11-05 A |  | 0% → 60% | 4d → 16d |
| 29 | Замер | 2024-11-05 A | 2024-11-08 A | 0% → 100% | 4d → none |
| 30 | Заказ и оплата потолков | 2024-11-11 A | 2024-11-14 A | 0% → 100% | 4d → none |
| 31 | Навесной потолок в спальне | 2024-12-13 A | 2024-12-18 A | 0% → 100% | 14d → none |
| 32 | Навесной потолок в гостиной | 2024-12-19 A |  | 0% → 60% |  |

## Version 3 (data date 2024-09-27, saved 2024-10-25, file ресурсы.mpp)

Note of the change: стрвп 3 нужно редачить

Last finish stays 2025-02-12. Complete tasks 6 → 3.

Changed:

| ID | Task | Start | Finish | Complete | Total float |
| --- | --- | --- | --- | --- | --- |
| 28 | **Потолки** | 2024-11-05 A → 2024-11-05 |  | 60% → 0% | 16d → 4d |
| 29 | Замер | 2024-11-05 A → 2024-11-05 | 2024-11-08 A → 2024-11-08 | 100% → 0% | none → 4d |
| 30 | Заказ и оплата потолков | 2024-11-11 A → 2024-11-11 | 2024-11-14 A → 2024-11-14 | 100% → 0% | none → 4d |
| 31 | Навесной потолок в спальне | 2024-12-13 A → 2024-12-13 | 2024-12-18 A → 2024-12-18 | 100% → 0% | none → 14d |
| 32 | Навесной потолок в гостиной | 2024-12-19 A → 2024-12-19 |  | 60% → 0% |  |

## Version 4 (data date 2024-09-27, saved 2024-11-01, file процент.mpp)

Note of the change: pms lab 9

Last finish stays 2025-02-12. Complete tasks 3 → 6.

Changed:

| ID | Task | Start | Finish | Complete | Total float |
| --- | --- | --- | --- | --- | --- |
| 28 | **Потолки** | 2024-11-05 A |  | 0% → 60% | 4d → 16d |
| 29 | Замер | 2024-11-05 A | 2024-11-08 A | 0% → 100% | 4d → none |
| 30 | Заказ и оплата потолков | 2024-11-11 A | 2024-11-14 A | 0% → 100% | 4d → none |
| 31 | Навесной потолок в спальне | 2024-12-13 A | 2024-12-18 A | 0% → 100% | 14d → none |
| 32 | Навесной потолок в гостиной | 2024-12-19 A |  | 0% → 60% |  |
